# 星火G3.5 1A

Schedule from a web Gantt chart, 2025-08-08 to 2025-12-24.
Every day is a working day

## Schedule

| ID | WBS | Task | Duration | Start | Finish | Predecessors | Complete | Status |
| --- | --- | --- | --- | --- | --- | --- | --- | --- |
| 2 | 1 | Layout ready | 4d | 2025-08-08 | 2025-08-11 |  | 100% | done |
| 3 | 2 | Mask in & W/S | 28d | 2025-08-12 | 2025-09-08 | 2 | 100% | done |
| 4 | 3 | 1st device lot F/O & CP | 20d | 2025-09-09 | 2025-09-28 | 3 | 100% | done |
| 5 | 4 | **盲封 验证动态性能&RE** | 87d | 2025-09-29 | 2025-12-24 |  | 17% |  |
| 6 | 4.1 | Assembly | 25d | 2025-09-29 | 2025-10-23 | 4 | 72% |  |
| 7 | 4.2 | Package ready | 2d | 2025-10-24 | 2025-10-25 | 6 |  | waiting |
| 8 | 4.3 | **RE 验证** | 60d | 2025-10-26 | 2025-12-24 | 7 |  | waiting |
| 9 | 4.3.1 | RE 168H & Samples ready | 15d | 2025-10-26 | 2025-11-09 |  |  | waiting |
| 10 | 4.3.2 | RE 1000H | 60d | 2025-10-26 | 2025-12-24 |  |  | waiting |
| 11 | 4.4 | CRE 动态验证 | 6d | 2025-10-26 | 2025-10-31 | 7 |  | waiting |
| 12 | 5 | 验证Vth & CP/system Idsat | 1d | 2025-09-09 | 2025-09-09 |  |  |  |
| 13 | 6 | wafer寄出 | 1d | 2025-08-08 | 2025-08-08 |  |  |  |
